How a schedule from MS Project changed from version to version. A marks actual dates.

## Version 1 (saved 2016-05-25)

Note of the change: Baseline 4

| ID | WBS | Task | Duration | Start | Finish | Predecessors | Complete | Total float | Constraint |
| --- | --- | --- | --- | --- | --- | --- | --- | --- | --- |
| 1 | 1 | **Projeto ES2** | 51d | 2016-04-01 A | 2016-06-10 |  | 58% |  |  |
| 2 | 1.1 | **Engenharia de Requisitos** | 9d | 2016-04-01 A | 2016-04-13 A |  | 100% |  |  |
| 3 |  | Elicitação de requisitos | 2d | 2016-04-01 A | 2016-04-04 A |  | 100% |  |  |
| 4 |  | Gestão de requisitos | 1d | 2016-04-05 A | 2016-04-05 A | 3 | 100% |  |  |
| 5 |  | Matriz de rastreabilidade | 1d | 2016-04-06 A | 2016-04-06 A | 4 | 100% |  |  |
| 6 |  | Validação dos requisitos | 3d | 2016-04-07 A | 2016-04-11 A | 5 | 100% |  |  |
| 7 |  | Documento de especificação | 2d | 2016-04-12 A | 2016-04-13 A | 6 | 100% |  |  |
| 8 |  | Documento de especificação suplementar | 1d | 2016-04-12 A | 2016-04-12 A | 6 | 100% |  |  |
| 9 | 1.2 | **Modelagem** | 5d | 2016-04-14 A | 2016-04-20 A |  | 100% |  |  |
| 10 |  | Elaboração de diagrama de Caso de Uso | 1d | 2016-04-14 A | 2016-04-14 A | 7 | 100% |  |  |
| 11 |  | Elaboração de Casos de Uso textuais | 2d | 2016-04-15 A | 2016-04-18 A | 10 | 100% |  |  |
| 12 |  | DFD | 2d | 2016-04-19 A | 2016-04-20 A | 11 | 100% |  |  |
| 13 | 1.3 | **Planejamento** | 4d | 2016-04-21 A | 2016-04-26 |  | 79% | 33d |  |
| 14 |  | Contagem de FP | 1d | 2016-04-21 A | 2016-04-21 A | 12 | 100% |  |  |
| 15 |  | Estimativas | 1d | 2016-04-21 A | 2016-04-21 A | 12 | 100% |  |  |
| 16 |  | Elaboração de gráfico de Gantt | 1d | 2016-04-22 A | 2016-04-22 | 15 | 50% | 35d |  |
| 17 |  | Elaboração de Gantt de controle | 1d | 2016-04-22 A | 2016-04-22 | 15 | 50% | 35d |  |
| 18 |  | Elaboração de diagrama de rede | 1d | 2016-04-22 A | 2016-04-22 | 15 | 50% | 35d |  |
| 19 |  | Gerenciamento de riscos | 1d | 2016-04-25 A | 2016-04-25 A | 18 | 100% |  | start no earlier than 2016-04-12 |
| 20 |  | Documento de Planejamento e Acompanhamento | 1d | 2016-04-26 A | 2016-04-26 A | 19 | 100% |  |  |
| 21 | 1.4 | **Construção** | 32d | 2016-04-27 A | 2016-06-09 |  | 47% | 0d |  |
| 22 |  | Prototipação | 2d | 2016-04-27 A | 2016-04-28 A | 20 | 100% |  |  |
| 23 |  | Codificação | 22d | 2016-04-29 A | 2016-05-30 | 22 | 50% | 1.5d |  |
| 24 |  | Testes | 6d | 2016-05-31 A | 2016-06-07 | 23 | 25% | 0.5d |  |
| 25 |  | Elaboração Manual de Uso | 2d | 2016-06-08 A | 2016-06-09 | 24 | 25% | 0d |  |
| 26 | 1.5 | **Emprego** | 1d | 2016-06-10 | 2016-06-10 |  |  | 0d |  |
| 27 |  | Homologação | 1d | 2016-06-10 | 2016-06-10 | 25 |  | 0d |  |
| 28 |  | Controle de versionamento | 51d | 2016-04-01 A | 2016-06-10 | 3SS | 50% | 0d | start no earlier than 2016-04-01 |

## Version 2 (saved 2016-06-09)

Note of the change: Atualização 20

Last finish stays 2016-06-10. Complete tasks 14 → 22.

Changed:

| ID | Task | Start | Finish | Complete | Total float |
| --- | --- | --- | --- | --- | --- |
| 1 | **Projeto ES2** |  | 2016-06-10 A | 58% → 100% |  |
| 13 | **Planejamento** |  | 2016-04-26 A | 79% → 100% | 33d → none |
| 16 | Elaboração de gráfico de Gantt |  | 2016-04-22 A | 50% → 100% | 35d → none |
| 17 | Elaboração de Gantt de controle |  | 2016-04-22 A | 50% → 100% | 35d → none |
| 18 | Elaboração de diagrama de rede |  | 2016-04-22 A | 50% → 100% | 35d → none |
| 21 | **Construção** |  | 2016-06-09 A | 47% → 100% | 0d → none |
| 23 | Codificação |  | 2016-05-30 A | 50% → 100% | 1.5d → none |
| 24 | Testes |  | 2016-06-07 A | 25% → 100% | 0.5d → none |
| 25 | Elaboração Manual de Uso |  | 2016-06-09 A | 25% → 100% | 0d → none |
| 26 | **Emprego** | 2016-06-10 A | 2016-06-10 A | 0% → 100% | 0d → none |
| 27 | Homologação | 2016-06-10 A | 2016-06-10 A | 0% → 100% | 0d → none |
| 28 | Controle de versionamento |  | 2016-06-10 A | 50% → 100% | 0d → none |
